# PickleVerse (PKV) – GFA26SE111 master schedule

Schedule from MS Project XML, 2026-09-07 to 2026-12-20, status date 2026-11-11.
FPT University

## Calendars

- Standard: Mon-Fri 08:00-12:00, 13:00-17:00; Sat-Sun off.

## Resources

| Resource |
| --- |
| Huỳnh Trung Kiên |
| Nguyễn Văn Thành Đạt |
| Nguyễn Gia Huy |
| Trần Nguyễn Hiếu Thuận |

## Schedule

| ID | WBS | Task | Duration | Start | Finish | Complete | Constraint | Resources | Work |
| --- | --- | --- | --- | --- | --- | --- | --- | --- | --- |
| 1 | 1 | **1 Project management and documentation** | 70d | 2026-09-07 | 2026-12-11 | 89% |  |  | 224h |
| 2 | 1.1 | 1.1 Planning, scheduling and weekly tracking | 70d | 2026-09-07 | 2026-12-11 | 60% | start no earlier than 2026-09-07 | Huỳnh Trung Kiên | 40h |
| 3 | 1.2 | 1.2 Report 1 and Report 2 | 10d | 2026-11-02 | 2026-11-13 | 100% | start no earlier than 2026-11-02 | Nguyễn Gia Huy; Huỳnh Trung Kiên | 24h |
| 4 | 1.3 | 1.3 Report 3 – Software Requirement Specification | 10d | 2026-11-02 | 2026-11-13 | 100% | start no earlier than 2026-11-02 | Nguyễn Gia Huy | 64h |
| 5 | 1.4 | 1.4 Report 4 – Software Design Document | 10d | 2026-11-02 | 2026-11-13 | 100% | start no earlier than 2026-11-02 | Nguyễn Văn Thành Đạt | 56h |
| 6 | 1.5 | 1.5 Reports 5–7, user guides and defense slides | 30d | 2026-11-02 | 2026-12-11 | 80% | start no earlier than 2026-11-02 | Nguyễn Gia Huy; Trần Nguyễn Hiếu Thuận | 40h |
| 7 | 2 | **2 Foundation and architecture** | 60d | 2026-09-07 | 2026-11-27 | 98% |  |  | 160h |
| 8 | 2.1 | 2.1 Unity project, scenes and assembly structure | 20d | 2026-09-07 | 2026-10-02 | 100% | start no earlier than 2026-09-07 | Nguyễn Gia Huy | 24h |
| 9 | 2.2 | 2.2 Layered Web API, EF Core model and database schema (59 tables) | 10d | 2026-10-19 | 2026-10-30 | 100% | start no earlier than 2026-10-19 | Nguyễn Văn Thành Đạt | 72h |
| 10 | 2.3 | 2.3 Docker Compose environment with PostgreSQL, Redis and S3 storage | 10d | 2026-11-02 | 2026-11-13 | 100% | start no earlier than 2026-11-02 | Nguyễn Văn Thành Đạt | 32h |
| 11 | 2.4 | 2.4 CI/CD pipeline (GitHub Actions, Docker Hub, SSH deployment) | 20d | 2026-11-02 | 2026-11-27 | 90% | start no earlier than 2026-11-02 | Nguyễn Văn Thành Đạt | 32h |
| 12 | 3 | **3 Gameplay core** | 20d | 2026-10-05 | 2026-10-30 | 100% |  |  | 240h |
| 13 | 3.1 | 3.1 Ball flight and bounce simulation at 120 Hz | 10d | 2026-10-05 | 2026-10-16 | 100% | start no earlier than 2026-10-05 | Nguyễn Gia Huy | 64h |
| 14 | 3.2 | 3.2 Paddle contact, shot input and seven shot kinds | 10d | 2026-10-05 | 2026-10-16 | 100% | start no earlier than 2026-10-05 | Nguyễn Gia Huy | 56h |
| 15 | 3.3 | 3.3 Singles rules engine (scoring, serve, faults, non-volley zone) | 10d | 2026-10-05 | 2026-10-16 | 100% | start no earlier than 2026-10-05 | Nguyễn Gia Huy | 56h |
| 16 | 3.4 | 3.4 Character movement and animation controller | 10d | 2026-10-05 | 2026-10-16 | 100% | start no earlier than 2026-10-05 | Nguyễn Gia Huy | 40h |
| 17 | 3.5 | 3.5 Match flow, HUD, intro cinematic and result screen | 20d | 2026-10-05 | 2026-10-30 | 100% | start no earlier than 2026-10-05 | Trần Nguyễn Hiếu Thuận | 24h |
| 18 | 4 | **4 FE-01 Account and onboarding** | 30d | 2026-10-19 | 2026-11-27 | 100% |  |  | 144h |
| 19 | 4.1 | 4.1 Registration and OTP email verification | 10d | 2026-10-19 | 2026-10-30 | 100% | start no earlier than 2026-10-19 | Nguyễn Văn Thành Đạt | 32h |
| 20 | 4.2 | 4.2 Sign in, sign out, JWT access and refresh tokens | 20d | 2026-10-19 | 2026-11-13 | 100% | start no earlier than 2026-10-19 | Nguyễn Văn Thành Đạt | 32h |
| 21 | 4.3 | 4.3 Password recovery | 10d | 2026-11-02 | 2026-11-13 | 100% | start no earlier than 2026-11-02 | Trần Nguyễn Hiếu Thuận | 16h |
| 22 | 4.4 | 4.4 Profile, character and onboarding level | 20d | 2026-10-19 | 2026-11-13 | 100% | start no earlier than 2026-10-19 | Trần Nguyễn Hiếu Thuận | 16h |
| 23 | 4.5 | 4.5 Settings: audio, graphics, key binding, touch layout | 10d | 2026-10-19 | 2026-10-30 | 100% | start no earlier than 2026-10-19 | Trần Nguyễn Hiếu Thuận | 32h |
| 24 | 4.6 | 4.6 PC display modes, window frame and quit buttons (added 16/11/2026) | 10d | 2026-11-16 | 2026-11-27 | 100% | start no earlier than 2026-11-16 | Nguyễn Gia Huy | 16h |

Notes:
- 2: Complexity Medium; Doing; Weekly tracking continues to the defense
- 3: Complexity Simple; Done; v1.0 on 11/11/2026; first versions late (06/11)
- 4: Complexity Complex; Done; v1.0 on 11/11/2026
- 5: Complexity Complex; Done; v1.0 on 11/11/2026
- 6: Complexity Medium; Doing; Reports 5–7 v1.0 done on 11/11/2026; defense slides pending
- 8: Complexity Simple; Done; Unity project initialised 17/09/2026
- 9: Complexity Complex; Done; Normalised schema 31/10/2026 (51 tables); 59 tables since the social feature of 15/11/2026
- 10: Complexity Medium; Done; Docker deployment 04/11/2026
- 11: Complexity Medium; Doing; 17 of 53 runs passed by 17/11/2026 (run 52 on 96ff8e9 with 15 check groups); the deploy job is skipped when the FastAPI and admin web checks are skipped (D-23, PB-24); Unity tests are not in CI yet (PB-09)
- 13: Complexity Complex; Done; Covered by EditMode tests
- 14: Complexity Complex; Done; PaddleContactTests, SinglesMatchTests
- 15: Complexity Complex; Done; SinglesMatchTests, MultiplayerRulesTests
- 16: Complexity Medium; Done; D-07 fixed 11/11/2026 (6d1ed37); retest in Round 2
- 17: Complexity Simple; Done; D-10 fixed (9557581, 329810f) and closed 18/11/2026 (EV-17)
- 19: Complexity Medium; Done; TC-F01-01 pending (test mailbox)
- 20: Complexity Medium; Done; TC-F01-02 passed
- 21: Complexity Simple; Done; Not yet system-tested
- 22: Complexity Simple; Done; D-07 fixed 11/11/2026 (6d1ed37); retest in Round 2
- 23: Complexity Medium; Done;
- 24: Complexity Simple; Done; 16/11/2026 (bc53722, 9dec659, 1b64424); EV-12, EV-13

| ID | WBS | Task | Duration | Start | Finish | Complete | Constraint | Resources | Work |
| --- | --- | --- | --- | --- | --- | --- | --- | --- | --- |
| 25 | 5 | **5 FE-02 Tutorial and technique training** | 40d | 2026-10-05 | 2026-11-27 | 95% |  |  | 184h |
| 26 | 5.1 | 5.1 Interactive tutorial (17 steps) | 10d | 2026-10-05 | 2026-10-16 | 100% | start no earlier than 2026-10-05 | Nguyễn Gia Huy | 40h |
| 27 | 5.2 | 5.2 Lesson and drill framework with star scoring | 30d | 2026-10-05 | 2026-11-13 | 100% | start no earlier than 2026-10-05 | Nguyễn Gia Huy | 56h |
| 28 | 5.3 | 5.3 Content of 15 lessons and 12 techniques | 10d | 2026-11-02 | 2026-11-13 | 100% | start no earlier than 2026-11-02 | Nguyễn Gia Huy | 40h |
| 29 | 5.4 | 5.4 Offline training and one-time synchronisation | 20d | 2026-11-02 | 2026-11-27 | 80% | start no earlier than 2026-11-02 | Nguyễn Văn Thành Đạt | 48h |
| 30 | 6 | **6 FE-03 Bot practice** | 20d | 2026-10-05 | 2026-10-30 | 100% |  |  | 120h |
| 31 | 6.1 | 6.1 Fixed-level bot (Easy, Medium, Hard) | 10d | 2026-10-05 | 2026-10-16 | 100% | start no earlier than 2026-10-05 | Nguyễn Gia Huy | 40h |
| 32 | 6.2 | 6.2 Adaptive behaviour-tree bot with Elo tiers | 10d | 2026-10-19 | 2026-10-30 | 100% | start no earlier than 2026-10-19 | Nguyễn Văn Thành Đạt | 56h |
| 33 | 6.3 | 6.3 Bot match setup, court and lighting options, rewards | 10d | 2026-10-05 | 2026-10-16 | 100% | start no earlier than 2026-10-05 | Trần Nguyễn Hiếu Thuận | 24h |
| 34 | 7 | **7 FE-04 Online matches** | 30d | 2026-10-19 | 2026-11-27 | 100% |  |  | 328h |
| 35 | 7.1 | 7.1 Photon Fusion session, lobby and room codes | 10d | 2026-10-19 | 2026-10-30 | 100% | start no earlier than 2026-10-19 | Nguyễn Văn Thành Đạt | 56h |
| 36 | 7.2 | 7.2 Ranked matchmaking, ready check and bot fallback | 20d | 2026-11-02 | 2026-11-27 | 100% | start no earlier than 2026-11-02 | Nguyễn Văn Thành Đạt | 56h |
| 37 | 7.3 | 7.3 Dedicated server build, signed tickets, lease and result | 20d | 2026-11-02 | 2026-11-27 | 100% | start no earlier than 2026-11-02 | Nguyễn Văn Thành Đạt | 72h |
| 38 | 7.4 | 7.4 State synchronisation, input prediction and reconnection | 20d | 2026-11-02 | 2026-11-27 | 100% | start no earlier than 2026-11-02 | Nguyễn Văn Thành Đạt | 72h |
| 39 | 7.5 | 7.5 Elo rating and match result persistence | 10d | 2026-11-02 | 2026-11-13 | 100% | start no earlier than 2026-11-02 | Nguyễn Văn Thành Đạt | 32h |
| 40 | 7.6 | 7.6 Ranked doubles with bot fill and the dedicated-server pool (added 15–17/11/2026) | 20d | 2026-11-02 | 2026-11-27 | 100% | start no earlier than 2026-11-02 | Nguyễn Văn Thành Đạt | 40h |
| 41 | 8 | **8 FE-05 AI coaching** | 20d | 2026-10-19 | 2026-11-13 | 100% |  |  | 144h |
| 42 | 8.1 | 8.1 Telemetry capture, local spool and upload | 10d | 2026-11-02 | 2026-11-13 | 100% | start no earlier than 2026-11-02 | Nguyễn Văn Thành Đạt | 40h |
| 43 | 8.2 | 8.2 FastAPI rule engine and gated tier model | 20d | 2026-10-19 | 2026-11-13 | 100% | start no earlier than 2026-10-19 | Nguyễn Văn Thành Đạt | 56h |
| 44 | 8.3 | 8.3 Hybrid analysis worker, analysis jobs and coaching panel | 10d | 2026-11-02 | 2026-11-13 | 100% | start no earlier than 2026-11-02 | Nguyễn Gia Huy | 48h |
| 45 | 9 | **9 FE-06 Progress, rewards and shop** | 10d | 2026-10-05 | 2026-10-16 | 100% |  |  | 120h |
| 46 | 9.1 | 9.1 XP, levels, technique mastery and progress dashboard | 10d | 2026-10-05 | 2026-10-16 | 100% | start no earlier than 2026-10-05 | Nguyễn Gia Huy | 40h |
| 47 | 9.2 | 9.2 Daily and weekly missions, achievements, streak rewards | 10d | 2026-10-05 | 2026-10-16 | 100% | start no earlier than 2026-10-05 | Nguyễn Văn Thành Đạt | 40h |
| 48 | 9.3 | 9.3 Currencies, shop and collection | 10d | 2026-10-05 | 2026-10-16 | 100% | start no earlier than 2026-10-05 | Nguyễn Gia Huy | 40h |

Notes:
- 26: Complexity Medium; Done; TC-F02-01 passed
- 27: Complexity Complex; Done; TC-F03-01..03 passed
- 28: Complexity Medium; Done; 15 lessons seeded
- 29: Complexity Complex; Doing; TC-F14-02 pending; D-02 fixed and closed 18/11/2026 (EV-17)
- 31: Complexity Medium; Done; D-13 balance session pending
- 32: Complexity Complex; Done; BhTreeTests passed
- 33: Complexity Simple; Done; D-05 fixed (d2fc5be)
- 35: Complexity Complex; Done; Moved to Photon Fusion 20/10/2026
- 36: Complexity Complex; Done; D-15 closed after retest on 18/11/2026 (EV-15): bot offered after 3 min 01 s
- 37: Complexity Complex; Done; D-09 closed after retest on 17/11/2026 (EV-15): human ranked 1v1 played to the end
- 38: Complexity Complex; Done; Reconnection within 20 s works (EV-15); the forfeit after 65 s matches BR-28 v1.5 (TC-F09-03 passed in EV-17; D-28 resolved by requirement change)
- 39: Complexity Medium; Done; Start Elo 100; the ranking reset uses the same value since 0cee928 (D-08 closed)
- 40: Complexity Complex; Done; Server pool 15/11/2026 (e160b4e); ranked doubles with bot fill 17/11/2026 (b08f5c7); CI check ranked-doubles passes (EV-11); played in the client with bot fill on 18/11/2026 (EV-16); four-human test pending; D-29 fixed and closed (EV-17)
- 42: Complexity Medium; Done;
- 43: Complexity Complex; Done; Tier model gated (NFR-06)
- 44: Complexity Medium; Done; D-02 and D-11 fixed and closed 18/11/2026 (EV-17)
- 46: Complexity Medium; Done;
- 47: Complexity Medium; Done;
- 48: Complexity Medium; Done; D-12 Elite Token source

| ID | WBS | Task | Duration | Start | Finish | Complete | Constraint | Resources | Work |
| --- | --- | --- | --- | --- | --- | --- | --- | --- | --- |
| 49 | 10 | **10 FE-07 Social, history and ranking** | 40d | 2026-10-05 | 2026-11-27 | 93% |  |  | 168h |
| 50 | 10.1 | 10.1 Friends, blocking and room invitations | 20d | 2026-10-05 | 2026-10-30 | 100% | start no earlier than 2026-10-05 | Nguyễn Văn Thành Đạt | 32h |
| 51 | 10.2 | 10.2 Match history, replay recording and replay viewer | 20d | 2026-10-05 | 2026-10-30 | 100% | start no earlier than 2026-10-05 | Nguyễn Văn Thành Đạt | 48h |
| 52 | 10.3 | 10.3 Elo leaderboard with cache | 10d | 2026-10-05 | 2026-10-16 | 100% | start no earlier than 2026-10-05 | Huỳnh Trung Kiên | 16h |
| 53 | 10.4 | 10.4 Social feed, video posts, direct messages and whispers (Review 1, added 15/11/2026) | 20d | 2026-11-02 | 2026-11-27 | 80% | start no earlier than 2026-11-02 | Nguyễn Văn Thành Đạt | 56h |
| 54 | 10.5 | 10.5 Match detail with game scores and error statistics (added 15/11/2026) | 10d | 2026-11-02 | 2026-11-13 | 100% | start no earlier than 2026-11-02 | Nguyễn Văn Thành Đạt | 16h |
| 55 | 11 | **11 FE-08 Reports, restrictions and appeals** | 10d | 2026-11-02 | 2026-11-13 | 100% |  |  | 48h |
| 56 | 11.1 | 11.1 Player report after a match | 10d | 2026-11-02 | 2026-11-13 | 100% | start no earlier than 2026-11-02 | Huỳnh Trung Kiên | 16h |
| 57 | 11.2 | 11.2 Restricted access, decision view and appeal | 10d | 2026-11-02 | 2026-11-13 | 100% | start no earlier than 2026-11-02 | Huỳnh Trung Kiên | 32h |
| 58 | 12 | **12 FE-09 Administration web application** | 20d | 2026-10-19 | 2026-11-13 | 100% |  |  | 192h |
| 59 | 12.1 | 12.1 Admin authentication, layout and protected routing | 10d | 2026-10-19 | 2026-10-30 | 100% | start no earlier than 2026-10-19 | Huỳnh Trung Kiên | 16h |
| 60 | 12.2 | 12.2 User management, sanctions and progress reset | 10d | 2026-11-02 | 2026-11-13 | 100% | start no earlier than 2026-11-02 | Huỳnh Trung Kiên | 48h |
| 61 | 12.3 | 12.3 Content management: lessons, references, cosmetics, missions | 10d | 2026-11-02 | 2026-11-13 | 100% | start no earlier than 2026-11-02 | Huỳnh Trung Kiên | 48h |
| 62 | 12.4 | 12.4 Live match monitoring and stopping | 10d | 2026-11-02 | 2026-11-13 | 100% | start no earlier than 2026-11-02 | Nguyễn Văn Thành Đạt | 32h |
| 63 | 12.5 | 12.5 Moderation of player reports and appeals | 10d | 2026-11-02 | 2026-11-13 | 100% | start no earlier than 2026-11-02 | Huỳnh Trung Kiên | 24h |
| 64 | 12.6 | 12.6 Analytics dashboard | 10d | 2026-11-02 | 2026-11-13 | 100% | start no earlier than 2026-11-02 | Huỳnh Trung Kiên | 24h |
| 65 | 13 | **13 FE-10 Expert review** | 10d | 2026-11-02 | 2026-11-13 | 100% |  |  | 32h |
| 66 | 13.1 | 13.1 Shot labelling and dataset export | 10d | 2026-11-02 | 2026-11-13 | 100% | start no earlier than 2026-11-02 | Nguyễn Văn Thành Đạt | 32h |
| 67 | 14 | **14 Art, audio and interface assets** | 40d | 2026-09-21 | 2026-11-13 | 100% |  |  | 144h |
| 68 | 14.1 | 14.1 Characters, 20 animation clips, courts and stadium | 20d | 2026-09-21 | 2026-10-16 | 100% | start no earlier than 2026-09-21 | Nguyễn Gia Huy | 64h |
| 69 | 14.2 | 14.2 Music and sound effects | 10d | 2026-10-05 | 2026-10-16 | 100% | start no earlier than 2026-10-05 | Huỳnh Trung Kiên | 16h |
| 70 | 14.3 | 14.3 Front-end screens, loading artwork and Vietnamese fonts | 20d | 2026-10-19 | 2026-11-13 | 100% | start no earlier than 2026-10-19 | Trần Nguyễn Hiếu Thuận | 40h |
| 71 | 14.4 | 14.4 Golden-hour district around the courts and night lighting (added 15/11/2026) | 10d | 2026-11-02 | 2026-11-13 | 100% | start no earlier than 2026-11-02 | Nguyễn Gia Huy | 24h |
| 72 | 15 | **15 Testing and release** | 30d | 2026-11-02 | 2026-12-11 | 37% |  |  | 144h |
| 73 | 15.1 | 15.1 Unit tests (Unity EditMode, Python) and coverage | 20d | 2026-11-02 | 2026-11-27 | 60% | start no earlier than 2026-11-02 | Trần Nguyễn Hiếu Thuận | 40h |
| 74 | 15.2 | 15.2 Integration and system testing on staging | 20d | 2026-11-16 | 2026-12-11 | 50% | start no earlier than 2026-11-16 | Trần Nguyễn Hiếu Thuận | 40h |
| 75 | 15.3 | 15.3 Acceptance tests, playtests and defect fixing | 20d | 2026-11-16 | 2026-12-11 |  | start no earlier than 2026-11-16 | Huỳnh Trung Kiên; Nguyễn Văn Thành Đạt; Nguyễn Gia Huy; Trần Nguyễn Hiếu Thuận | 48h |
| 76 | 15.4 | 15.4 Staging deployment and release package | 30d | 2026-11-02 | 2026-12-11 | 60% | start no earlier than 2026-11-02 | Nguyễn Văn Thành Đạt | 16h |

Notes:
- 50: Complexity Medium; Done; TC-F12-01 passed (EV-15)
- 51: Complexity Complex; Done;
- 52: Complexity Simple; Done;
- 53: Complexity Complex; Doing; Implemented 15/11/2026 (e160b4e); CI check social-content passes (EV-11); video upload from the Windows build since 9557581 (EV-17), not yet on Android (D-22); no moderation of posts and messages (PB-25)
- 54: Complexity Simple; Done; 15/11/2026 (e160b4e); TC-F11-04 not yet run
- 56: Complexity Simple; Done; TC-F17-01 and W04 passed on 18/11/2026 after the fix of D-27 (EV-17)
- 57: Complexity Medium; Done; TC-F17-03 passed (EV-15)
- 59: Complexity Simple; Done;
- 60: Complexity Complex; Done; Admin web cases run on 17–18/11/2026 (EV-15); D-25 and D-26 fixed and closed (EV-17)
- 61: Complexity Medium; Done;
- 62: Complexity Medium; Done;
- 63: Complexity Medium; Done;
- 64: Complexity Medium; Done;
- 66: Complexity Medium; Done; No labelled real data yet
- 68: Complexity Complex; Done;
- 69: Complexity Simple; Done;
- 70: Complexity Medium; Done; D-01 open; D-04 and D-19 closed after retest (EV-15)
- 71: Complexity Medium; Done; 15/11/2026; frame rate measured only in the Editor (Doc/Sunset_District_20261115.md); no phone measurement
- 73: Complexity Medium; Doing; 522 EditMode tests passed on 16/11/2026 (EV-12); IntegrationChecks (15 groups), pytest and the web type check pass in CI on main @ 96ff8e9 (EV-11); coverage not measured
- 74: Complexity Medium; Doing; Round 1 done; 101 of 129 cases passed after the checks of 13–17/11/2026 and the end-to-end runs of 17–18/11/2026 (EV-15, EV-16) and the defect retest EV-17; rest of Round 2 and Round 3 planned
- 75: Complexity Medium; Pending; Acceptance 07–11/12/2026
- 76: Complexity Simple; Doing; Staging deployed by the pipeline (run 52 deployed 96ff8e9 on 17/11/2026); Windows build of main @ 96ff8e9 made on 17/11/2026 (EV-15) and Windows builds with the fixes of 18/11/2026 (EV-17); APKs of 12/11 and 14/11/2026 use protocol 18 and must be rebuilt (protocol 20); release package pending

| ID | WBS | Task | Type | Duration | Start | Finish | Predecessors | Complete | Constraint |
| --- | --- | --- | --- | --- | --- | --- | --- | --- | --- |
| 77 | 16 | **Milestones** |  | 70d | 2026-09-13 | 2026-12-20 |  |  |  |
| 78 | 16.1 | M01 Report 1 – Project Introduction | milestone | 0d | 2026-09-13 | 2026-09-13 | 3 | 100% | start no earlier than 2026-09-13 |
| 79 | 16.2 | M02 Report 2 – Project Management Plan | milestone | 0d | 2026-09-20 | 2026-09-20 | 3 | 100% | start no earlier than 2026-09-20 |
| 80 | 16.3 | M03 Report 3 – SRS | milestone | 0d | 2026-09-27 | 2026-09-27 | 4 | 100% | start no earlier than 2026-09-27 |
| 81 | 16.4 | M04 Report 4 – SDD and test plan | milestone | 0d | 2026-10-11 | 2026-10-11 | 5 | 100% | start no earlier than 2026-10-11 |
| 82 | 16.5 | M05 Software Package 1 (Review 2) | milestone | 0d | 2026-10-25 | 2026-10-25 | 15, 27, 68 | 100% | start no earlier than 2026-10-25 |
| 83 | 16.6 | M06 Software Package 2 | milestone | 0d | 2026-11-08 | 2026-11-08 | 11, 64, 44 | 100% | start no earlier than 2026-11-08 |
| 84 | 16.7 | M07 Software Package 3 (Review 3) | milestone | 0d | 2026-11-22 | 2026-11-22 | 37, 74 |  | start no earlier than 2026-11-22 |
| 85 | 16.8 | M08 Full software package | milestone | 0d | 2026-12-06 | 2026-12-06 | 74 |  | start no earlier than 2026-12-06 |
| 86 | 16.9 | M09 Report 6 – User Guides | milestone | 0d | 2026-12-13 | 2026-12-13 | 6 | 100% | start no earlier than 2026-12-13 |
| 87 | 16.10 | M10 Report 7 and final defense | milestone | 0d | 2026-12-20 | 2026-12-20 | 75, 76 |  | start no earlier than 2026-12-20 |

Notes:
- 78: Actual: 06/11/2026
- 79: Actual: 06/11/2026
- 80: Actual: 06/11/2026
- 81: Actual: 06/11/2026
- 82: Actual: 27/10/2026
- 83: Actual: 06/11/2026
- 84: Actual: planned
- 85: Actual: planned
- 86: Actual: 11/11/2026 (v1.0)
- 87: Actual: Report 7 v1.0 on 11/11/2026; defense pending
